# Integrated Programme of Works, MW-PPPC-546386-GO-RFB

Schedule from MS Project XML, 2027-01-04 to 2027-08-13.

## Calendars

- Standard: Mon-Fri 08:00-12:00, 13:00-17:00; Sat-Sun off.

## Resources

| Resource |
| --- |
| Inkript |
| RME |
| Equipment manufacturer |
| Card manufacturer |
| Independent penetration tester |
| NRB |
| NRB developers |
| e-Government |

## Schedule

| ID | WBS | Task | Type | Duration | Start | Finish | Predecessors | Resources |
| --- | --- | --- | --- | --- | --- | --- | --- | --- |
| 1 | 1 | Effective Date | milestone | 0w | 2027-01-04 | 2027-01-04 |  |  |
| 2 | 2 | **Project management and coordination** |  | 32w | 2027-01-04 | 2027-08-13 |  |  |
| 3 | 2.1 | Project management, progress reporting and single point of contact with NRB |  | 32w | 2027-01-04 | 2027-08-13 | 1 | Inkript |
| 4 | 2.2 | Coordination with end users and government stakeholders in Malawi |  | 32w | 2027-01-04 | 2027-08-13 | 1 | RME |
| 5 | 3 | **1 Project mobilization and planning** |  | 2w | 2027-01-04 | 2027-01-15 |  |  |
| 6 | 3.1 | Mobilize the Information System team |  | 1w | 2027-01-04 | 2027-01-08 | 1 | Inkript |
| 7 | 3.2 | Confirm Purchaser inputs and baseline the schedule |  | 2w | 2027-01-04 | 2027-01-15 | 1 | Inkript |
| 8 | 3.3 | Discovery: NRIS documentation, current process and site walkthroughs |  | 2w | 2027-01-04 | 2027-01-15 | 1 | Inkript |
| 9 | 3.4 | Site survey and assessment of the existing facility: dimensions, structure, electrical load and environment |  | 2w | 2027-01-04 | 2027-01-15 | 1 | RME |
| 10 | 3.5 | Order long-lead equipment and ICT infrastructure |  | 1w | 2027-01-11 | 2027-01-15 | 6 | Inkript |
| 11 | 3.6 | Recommended trainee numbers and prerequisites issued to NRB | milestone | 0w | 2027-01-15 | 2027-01-15 | 7 | Inkript |
| 12 | 4 | **2 Design and detailed planning** |  | 4w | 2027-01-18 | 2027-02-12 |  |  |
| 13 | 4.1 | Discovery: NRIS test data profiling and Discovery Report |  | 2w | 2027-01-18 | 2027-01-29 | 8, 118, 119 | Inkript |
| 14 | 4.2 | ICT Site Preparation Guide |  | 2w | 2027-01-18 | 2027-01-29 | 8 | Inkript |
| 15 | 4.3 | ICT Site Preparation Guide issued to the facility works | milestone | 0w | 2027-01-29 | 2027-01-29 | 14 | Inkript |
| 16 | 4.4 | Network requirements for the Government Wide Area Network |  | 1w | 2027-01-25 | 2027-01-29 | 14SS+1w | Inkript |
| 17 | 4.5 | High-Level Design |  | 2w | 2027-01-18 | 2027-01-29 | 8 | Inkript |
| 18 | 4.6 | Low-Level Design |  | 2w | 2027-01-25 | 2027-02-05 | 17SS+1w | Inkript |
| 19 | 4.7 | Interface Control Documents, agreed with NRB developers |  | 3w | 2027-01-18 | 2027-02-05 | 8 | Inkript; NRB developers |
| 20 | 4.8 | Security Design Documentation and certificate profile with e-Government |  | 3w | 2027-01-18 | 2027-02-05 | 8 | Inkript; e-Government |
| 21 | 4.9 | Card layout and card identifier, joint redesign with NRB |  | 3w | 2027-01-18 | 2027-02-05 | 8 | Inkript; Card manufacturer |
| 22 | 4.10 | Future-state processes and draft Standard Operating Procedures |  | 3w | 2027-01-18 | 2027-02-05 | 8 | Inkript |
| 23 | 4.11 | Facility design: architectural, electrical and mechanical drawings, layout plans, power and cooling design, bill of quantities |  | 3w | 2027-01-18 | 2027-02-05 | 9, 15FF+1w | RME |
| 24 | 4.12 | Design submitted for approval | milestone | 0w | 2027-02-05 | 2027-02-05 | 13, 16, 18, 19, 20, 21, 22, 23 | Inkript; RME |
| 25 | 4.13 | Design review with NRB |  | 1w | 2027-02-08 | 2027-02-12 | 24 | NRB; Inkript |
| 26 | 4.14 | Statutory approval of the structural and electrical designs, coordinated by NRB |  | 1w | 2027-02-08 | 2027-02-12 | 23 | NRB; RME |
| 27 | 4.15 | Detailed Design Approval | milestone | 0w | 2027-02-12 | 2027-02-12 | 25 | NRB |

Notes:
- 27: Contractual milestone in the Implementation Schedule

| ID | WBS | Task | Type | Duration | Start | Finish | Predecessors | Resources |
| --- | --- | --- | --- | --- | --- | --- | --- | --- |
| 28 | 5 | **3 Procurement and manufacturing** |  | 21w | 2027-01-18 | 2027-06-11 |  |  |
| 29 | 5.1 | Equipment manufacture, started on order: two personalization and two mailing systems |  | 10w | 2027-01-18 | 2027-03-26 | 10 | Equipment manufacturer |
| 30 | 5.2 | Options fixed at design approval fitted to the equipment |  | 2w | 2027-03-15 | 2027-03-26 | 27FS+4w, 29SS+8w | Equipment manufacturer |
| 31 | 5.3 | Equipment ready for factory acceptance | milestone | 0w | 2027-03-26 | 2027-03-26 | 29, 30 | Equipment manufacturer |
| 32 | 5.4 | Blank cards, first production run: qualification and factory acceptance stock |  | 7w | 2027-02-15 | 2027-04-02 | 27, 120 | Card manufacturer |
| 33 | 5.5 | Qualification cards delivered to the equipment factory | milestone | 0w | 2027-04-09 | 2027-04-09 | 32FS+1w | Card manufacturer |
| 34 | 5.6 | Factory acceptance test procedure issued to NRB for approval | milestone | 0w | 2027-04-09 | 2027-04-09 | 27FS+8w | Inkript |
| 35 | 5.7 | Blank cards, first delivery of not less than 500,000 |  | 5w | 2027-04-05 | 2027-05-07 | 32 | Card manufacturer |
| 36 | 5.8 | Blank cards, remaining 1,500,000 in shipments of not less than 500,000 |  | 5w | 2027-05-10 | 2027-06-11 | 35 | Card manufacturer |
| 37 | 5.9 | ICT infrastructure manufacture and delivery, ordered at mobilization |  | 11w | 2027-01-18 | 2027-04-02 | 10 | Inkript |
| 38 | 5.10 | Application build: components defined by the Technical Requirements, from design start |  | 12w | 2027-01-18 | 2027-04-09 | 8 | Inkript |
| 39 | 5.11 | Application build: NRIS-facing and signing components, after design approval |  | 10w | 2027-02-15 | 2027-04-23 | 27, 121, 122 | Inkript |
| 40 | 5.12 | NRIS interface simulators from the Interface Control Documents |  | 2w | 2027-02-15 | 2027-02-26 | 27 | Inkript |
| 41 | 5.13 | Production side of the NRIS interface, tested against simulators |  | 8w | 2027-03-01 | 2027-04-23 | 40 | Inkript |
| 42 | 5.14 | Clearing agent appointed | milestone | 0w | 2027-03-26 | 2027-03-26 | 27FS+6w | RME |
| 43 | 5.15 | Customs documentation prepared |  | 4w | 2027-03-29 | 2027-04-23 | 42 | RME |
| 44 | 6 | **4 Facility renovation (facility works)** |  | 12w | 2027-02-15 | 2027-05-07 |  |  |
| 45 | 6.1 | Mobilization and site establishment of the facility works |  | 1w | 2027-02-15 | 2027-02-19 | 27, 26, 15 | RME |
| 46 | 6.2 | Health, safety, environmental and waste management of the works |  | 12w | 2027-02-15 | 2027-05-07 | 45SS | RME |
| 47 | 6.3 | Civil and architectural works: partitions, secure areas and physical reinforcement |  | 5w | 2027-02-15 | 2027-03-19 | 45SS | RME |
| 48 | 6.4 | Server room, built first: power, UPS, precision cooling, clean agent suppression, access control, racks and cabling |  | 5w | 2027-03-01 | 2027-04-02 | 47SS+2w | RME |
| 49 | 6.5 | Server room tested and commissioned |  | 1w | 2027-04-05 | 2027-04-09 | 48, 125 | RME |
| 50 | 6.6 | Server room handed over: sealed, powered through its UPS, cooled and cabled | milestone | 0w | 2027-04-09 | 2027-04-09 | 49 | RME |
| 51 | 6.7 | Electrical installation: distribution boards, dedicated circuits, protection, earthing, lightning protection, emergency lighting |  | 8w | 2027-02-22 | 2027-04-16 | 47SS+1w | RME |
| 52 | 6.8 | HVAC and environmental control: air conditioning, ventilation, humidity control, air filtration and sensors |  | 7w | 2027-03-08 | 2027-04-23 | 47SS+3w | RME |
| 53 | 6.9 | Fire detection, alarm and suppression systems |  | 5w | 2027-03-15 | 2027-04-16 | 47SS+4w | RME |
| 54 | 6.10 | Structured cabling, network cabinets, outlets and labelling |  | 5w | 2027-03-15 | 2027-04-16 | 47SS+4w | RME |
| 55 | 6.11 | Physical security systems: access control, CCTV and intrusion detection |  | 5w | 2027-03-22 | 2027-04-23 | 47 | RME |
| 56 | 6.12 | Secure blank card store, sized for 2,000,000 cards |  | 6w | 2027-03-22 | 2027-04-30 | 47 | RME |
| 57 | 6.13 | Finishes and fit-out: ceilings, floors, doors, furniture, workstations, quality control and consumables stations |  | 4w | 2027-04-05 | 2027-04-30 | 47FS+2w | RME |
| 58 | 6.14 | Facility systems tested and commissioned, including pre-commissioning tests 2 and 3 (electrical power, environmental systems) |  | 2w | 2027-04-19 | 2027-04-30 | 51, 53, 52FF+1w, 55FF+1w, 54FF+2w | RME |
| 59 | 6.15 | Readiness inspection of the production floor |  | 1w | 2027-05-03 | 2027-05-07 | 58, 57, 56 | RME; Inkript |
| 60 | 6.16 | Production floor ready for installation | milestone | 0w | 2027-05-07 | 2027-05-07 | 59 | RME |
| 61 | 6.17 | Secure blank card store ready | milestone | 0w | 2027-05-07 | 2027-05-07 | 59 | RME |

| ID | WBS | Task | Type | Duration | Start | Finish | Predecessors | Resources |
| --- | --- | --- | --- | --- | --- | --- | --- | --- |
| 62 | 7 | **5 Factory acceptance testing** |  | 1w | 2027-04-26 | 2027-04-30 |  |  |
| 63 | 7.1 | Factory acceptance of the equipment on production card stock, NRB delegation present |  | 1w | 2027-04-26 | 2027-04-30 | 31, 32, 33, 34, 124, 1FS+16w | Equipment manufacturer; Inkript |
| 64 | 7.2 | Printer Control Service proven against the equipment software |  | 1w | 2027-04-26 | 2027-04-30 | 31, 38, 1FS+16w | Inkript |
| 65 | 7.3 | NRB technical staff trained at the factory |  | 1w | 2027-04-26 | 2027-04-30 | 31, 1FS+16w | Equipment manufacturer |
| 66 | 7.4 | Successful FAT | milestone | 0w | 2027-04-30 | 2027-04-30 | 63, 64, 65 | Inkript |
| 67 | 8 | **6 Shipping and customs clearance** |  | 8w | 2027-05-03 | 2027-06-25 |  |  |
| 68 | 8.1 | Shipping of the personalization and mailing equipment |  | 2w | 2027-05-03 | 2027-05-14 | 66 | Inkript |
| 69 | 8.2 | Customs clearance and delivery to NRB |  | 1w | 2027-05-17 | 2027-05-21 | 68, 43, 129 | RME |
| 70 | 8.3 | Equipment delivered on site | milestone | 0w | 2027-05-21 | 2027-05-21 | 69 | RME |
| 71 | 8.4 | First card delivery shipped, cleared and delivered to NRB |  | 2w | 2027-05-10 | 2027-05-21 | 35, 129 | Inkript; RME |
| 72 | 8.5 | First card delivery on site | milestone | 0w | 2027-05-21 | 2027-05-21 | 71, 61 | RME |
| 73 | 8.6 | Remaining card shipments cleared and delivered to NRB |  | 2w | 2027-06-14 | 2027-06-25 | 36, 129 | Inkript; RME |
| 74 | 8.7 | All 2,000,000 cards on site, before commissioning | milestone | 0w | 2027-06-25 | 2027-06-25 | 73 | RME |
| 75 | 9 | **7 Installation and site acceptance testing** |  | 12w | 2027-04-12 | 2027-07-02 |  |  |
| 76 | 9.1 | ICT infrastructure delivered to site, inspected and racked |  | 1w | 2027-04-12 | 2027-04-16 | 37, 50 | RME; Inkript |
| 77 | 9.2 | NRB technical staff shadow installation and commissioning |  | 12w | 2027-04-12 | 2027-07-02 | 76SS, 126 | NRB |
| 78 | 9.3 | Platform build: application and database clusters, storage array, directory, database, security, non-production environments |  | 1w | 2027-04-19 | 2027-04-23 | 76 | Inkript |
| 79 | 9.4 | Hardware security module installed at the primary site, key ceremony, certificate signing request to e-Government |  | 1w | 2027-04-19 | 2027-04-23 | 76 | Inkript |
| 80 | 9.5 | Secondary environment deployed at Blantyre, its hardware security module enrolled, and replication established |  | 3w | 2027-04-19 | 2027-05-07 | 76, 127, 128 | Inkript |
| 81 | 9.6 | Application deployed and integrated with the directory |  | 1w | 2027-04-26 | 2027-04-30 | 78, 38, 39 | Inkript |
| 82 | 9.7 | Pre-Commissioning Test Program submitted to NRB for approval | milestone | 0w | 2027-04-30 | 2027-04-30 | 76FS+2w | Inkript |
| 83 | 9.8 | Early integration with NRIS: interfaces tested as NRB delivers them |  | 5w | 2027-05-03 | 2027-06-04 | 81, 41, 130 | Inkript; NRB developers |
| 84 | 9.9 | Integration with NRIS completed against NRB's delivered side |  | 2w | 2027-06-07 | 2027-06-18 | 133, 81, 41, 130 | Inkript; NRB developers |
| 85 | 9.10 | Pre-commissioning tests of the ICT estate, Table A 4, 5, 8 and 13 |  | 2w | 2027-05-10 | 2027-05-21 | 81, 80, 82 | Inkript |
| 86 | 9.11 | Performance testing of the software, and security testing |  | 2w | 2027-05-17 | 2027-05-28 | 81, 85SS+1w | Inkript |
| 87 | 9.12 | Equipment inspected on delivery, unpacked and placed |  | 1w | 2027-05-24 | 2027-05-28 | 70, 60 | Inkript; RME |
| 88 | 9.13 | Equipment installed and commissioned by the manufacturer's engineers |  | 3w | 2027-05-24 | 2027-06-11 | 70, 60 | Equipment manufacturer |
| 89 | 9.14 | Critical Spare Parts List submitted to NRB for approval | milestone | 0w | 2027-06-18 | 2027-06-18 | 70FS+4w | Inkript |
| 90 | 9.15 | User acceptance testing with NRIS stakeholders |  | 2w | 2027-06-14 | 2027-06-25 | 81, 84SS+1w | Inkript; NRB |
| 91 | 9.16 | Security Operations Center integrated with NRB's Security Operations Center |  | 1w | 2027-06-21 | 2027-06-25 | 81, 136 | Inkript |
| 92 | 9.17 | Independent penetration testing of the full deployed configuration |  | 1w | 2027-06-14 | 2027-06-18 | 88, 81 | Independent penetration tester |
| 93 | 9.18 | Pre-commissioning tests of the equipment and integration, Table A 1, 6, 7, 9 to 12, 14 and 16 |  | 3w | 2027-06-14 | 2027-07-02 | 88, 82, 84FF+2w | Inkript |
| 94 | 9.19 | Pilot production of 500 to 1,000 test cards, not issued to citizens |  | 1w | 2027-06-28 | 2027-07-02 | 88, 90, 84, 135, 72 | Inkript |
| 95 | 9.20 | Installation and SAT complete | milestone | 0w | 2027-07-02 | 2027-07-02 | 85, 93, 86, 92, 94, 80 | Inkript |

Notes:
- 66: Contractual milestone in the Implementation Schedule
- 70: Contractual milestone in the Implementation Schedule
- 95: Contractual milestone in the Implementation Schedule

| ID | WBS | Task | Type | Duration | Start | Finish | Predecessors | Resources |
| --- | --- | --- | --- | --- | --- | --- | --- | --- |
| 96 | 10 | **8 Training and knowledge transfer** |  | 5w | 2027-06-14 | 2027-07-16 |  |  |
| 97 | 10.1 | User training, groups one and two, one for each shift |  | 2w | 2027-06-21 | 2027-07-02 | 88FS+1w, 131, 1FS+24w | Inkript |
| 98 | 10.2 | Technical training, NRB technical trainers co-delivering |  | 2w | 2027-06-28 | 2027-07-09 | 97SS+1w | Inkript |
| 99 | 10.3 | Management training |  | 1w | 2027-06-28 | 2027-07-02 | 97SS+1w | Inkript |
| 100 | 10.4 | User training, cover group, delivered by NRB trainers under observation |  | 2w | 2027-07-05 | 2027-07-16 | 97 | NRB |
| 101 | 10.5 | Training venues, logistics and trainee coordination |  | 5w | 2027-06-14 | 2027-07-16 | 1FS+23w | RME |
| 102 | 10.6 | Facility training: facility operations, electrical, HVAC, fire and security systems, preventive maintenance, emergency procedures |  | 2w | 2027-07-05 | 2027-07-16 | 1FS+26w | RME |
| 103 | 10.7 | Training completed | milestone | 0w | 2027-07-16 | 2027-07-16 | 97, 98, 99, 100, 102 | Inkript |
| 104 | 11 | **9 System commissioning and performance testing** |  | 4w | 2027-07-05 | 2027-07-30 |  |  |
| 105 | 11.1 | Operational acceptance tests 1 to 12, 14 and 15 |  | 1w | 2027-07-05 | 2027-07-09 | 95, 74 | NRB; Inkript |
| 106 | 11.2 | Sustained production stability and multi-shift operation, tests 2 and 13 |  | 2w | 2027-07-05 | 2027-07-16 | 95 | NRB; Inkript |
| 107 | 11.3 | Operational independence, test 16 |  | 1w | 2027-07-12 | 2027-07-16 | 97, 98 | NRB |
| 108 | 11.4 | Final acceptance demonstration, test 17, ten working day observation |  | 2w | 2027-07-19 | 2027-07-30 | 105, 106, 107, 123 | NRB; Inkript |
| 109 | 11.5 | System commissioned | milestone | 0w | 2027-07-30 | 2027-07-30 | 108 | Inkript |
| 110 | 11.6 | Warranty and support documentation delivered | milestone | 0w | 2027-07-30 | 2027-07-30 | 108 | Inkript |
| 111 | 12 | **10 Handover, go-live and closure** |  | 2w | 2027-08-02 | 2027-08-13 |  |  |
| 112 | 12.1 | As-built documentation, prepared progressively from week 27, finalized |  | 2w | 2027-08-02 | 2027-08-13 | 109 | Inkript |
| 113 | 12.2 | Transfer of Security Operations Center operation to NRB |  | 2w | 2027-08-02 | 2027-08-13 | 109, 91 | Inkript |
| 114 | 12.3 | Stabilization: resident engineers on every shift, daily review with NRB |  | 2w | 2027-08-02 | 2027-08-13 | 109, 137 | Inkript |
| 115 | 12.4 | Facility as-built drawings, test reports, manuals, warranties and maintenance schedules delivered |  | 2w | 2027-08-02 | 2027-08-13 | 109 | RME |
| 116 | 12.5 | Full handover and go-live | milestone | 0w | 2027-08-13 | 2027-08-13 | 112, 113, 114, 115 | Inkript; RME |
| 117 | 13 | **Dependencies on the Purchaser and other parties** |  | 24w | 2027-01-11 | 2027-06-25 |  |  |
| 118 | 13.1 | NRIS documentation received (NRB) | milestone | 0w | 2027-01-08 | 2027-01-08 | 1FS+1w | NRB |
| 119 | 13.2 | Access to the NRIS test environment for profiling (NRB) | milestone | 0w | 2027-01-15 | 2027-01-15 | 1FS+2w | NRB |
| 120 | 13.3 | Card design decisions (NRB) | milestone | 0w | 2027-02-05 | 2027-02-05 | 1FS+5w | NRB |
| 121 | 13.4 | QR code specification (NRB) | milestone | 0w | 2027-02-05 | 2027-02-05 | 1FS+5w | NRB |
| 122 | 13.5 | Certificate profile and signing request procedure (e-Government) | milestone | 0w | 2027-02-05 | 2027-02-05 | 1FS+5w | e-Government |
| 123 | 13.6 | Observation period for the final acceptance demonstration agreed (NRB) | milestone | 0w | 2027-02-05 | 2027-02-05 | 1FS+5w | NRB |
| 124 | 13.7 | Factory acceptance delegation nominated (NRB) | milestone | 0w | 2027-03-19 | 2027-03-19 | 1FS+11w | NRB |
| 125 | 13.8 | Dedicated electrical connection to the facility live (NRB) | milestone | 0w | 2027-03-26 | 2027-03-26 | 1FS+12w | NRB |
| 126 | 13.9 | Technical trainees nominated (NRB) | milestone | 0w | 2027-04-09 | 2027-04-09 | 1FS+14w | NRB |
| 127 | 13.10 | Government Wide Area Network provisioned (NRB, e-Government) | milestone | 0w | 2027-04-16 | 2027-04-16 | 1FS+15w | NRB; e-Government |
| 128 | 13.11 | Access, floor space, power and cooling at the Blantyre data center (NRB) | milestone | 0w | 2027-04-16 | 2027-04-16 | 1FS+15w | NRB |
| 129 | 13.12 | Purchaser documents for customs clearance (NRB) | milestone | 0w | 2027-04-23 | 2027-04-23 | 1FS+16w | NRB |
| 130 | 13.13 | Connectivity from the facility to the NRIS test environment (NRB) | milestone | 0w | 2027-04-30 | 2027-04-30 | 1FS+17w | NRB |
| 131 | 13.14 | User trainees nominated (NRB) | milestone | 0w | 2027-05-14 | 2027-05-14 | 1FS+19w | NRB |
| 132 | 13.15 | NRIS side of the interface (NRB developers) |  | 16w | 2027-02-15 | 2027-06-04 | 27, 19 | NRB developers |
| 133 | 13.16 | NRIS side of the interface ready for integration (NRB) | milestone | 0w | 2027-06-04 | 2027-06-04 | 132 | NRB developers |
| 134 | 13.17 | Document Signer certificate issue (e-Government) |  | 3w | 2027-04-26 | 2027-05-14 | 79 | e-Government |
| 135 | 13.18 | Document Signer certificate issued (e-Government) | milestone | 0w | 2027-05-14 | 2027-05-14 | 134 | e-Government |
| 136 | 13.19 | NRB Security Operations Center integration details (NRB) | milestone | 0w | 2027-06-18 | 2027-06-18 | 1FS+24w | NRB |
| 137 | 13.20 | Remote support access arranged (NRB, e-Government) | milestone | 0w | 2027-06-25 | 2027-06-25 | 1FS+25w | NRB; e-Government |

Notes:
- 103: Contractual milestone in the Implementation Schedule
- 109: Contractual milestone in the Implementation Schedule
- 116: Contractual milestone in the Implementation Schedule
